# NEW FINAL_updated_v1

How a schedule from MS Project changed from version to version. A marks actual dates.

## Version 1 (saved 2021-11-10, file Group3_Base Line Plan.mpp.mpp)

Note of the change: ITProject-Management-Repo

| ID | WBS | Task | Duration | Start | Finish | Predecessors | Total float |
| --- | --- | --- | --- | --- | --- | --- | --- |
| 1 | 1 | **PROJECT INITIALIZATION** | 13d | 2021-09-02 | 2021-09-20 |  |  |
| 2 |  | Identify MOV | 3d | 2021-09-02 | 2021-09-06 |  | 0d |
| 3 |  | DEFINING ALTERNATIVES | 4d | 2021-09-07 | 2021-09-10 | 2 | 0d |
| 4 |  | TOTAL COST OF OWNERSHIP | 3d | 2021-09-13 | 2021-09-15 | 3 | 0d |
| 5 |  | TOTAL BENEFIT OF OWNERSHIP | 2d | 2021-09-16 | 2021-09-17 | 4 | 0d |
| 6 |  | BUSINESS CASE DELIVERABLE | 1d | 2021-09-20 | 2021-09-20 | 5 |  |
| 7 |  | MILESTONE : CLIENT APPROVAL OF BUSINESS CASE | 1d | 2021-09-21 | 2021-09-21 | 1 |  |
| 8 | 3 | **PROJECT CHARTER** | 2d | 2021-09-22 | 2021-09-23 | 7, 1 |  |
| 9 |  | CREATING PROJECT CHARTER | 2d | 2021-09-22 | 2021-09-23 | 7 |  |
| 10 |  | MILESTONE:PROJECT CHARTER APPROVAL | 1d | 2021-09-24 | 2021-09-24 | 8 |  |
| 11 | 5 | **PROJECT PLANNING** | 9d | 2021-09-27 | 2021-10-07 | 10 |  |
| 12 |  | IDENTIFY SCOPE OF PROJECT | 2d | 2021-09-27 | 2021-09-28 | 10 |  |
| 13 |  | DESIGNING THE STRUCTURE CHART | 1d | 2021-09-29 | 2021-09-29 | 12 |  |
| 14 |  | CREATING THE WORK BREAKDOWN STRUCTURE | 2d | 2021-09-30 | 2021-10-01 | 13 |  |
| 15 |  | IDENTIFY AND ALLOCATE RESOURCES | 1d | 2021-10-04 | 2021-10-04 | 14 |  |
| 16 |  | ESTIMATING THE BUDGET | 2d | 2021-10-05 | 2021-10-06 | 15 |  |
| 17 |  | DELIVARABLE : SCOPE MANGEMENT PLAN | 1d | 2021-10-07 | 2021-10-07 | 16 |  |
| 18 |  | MILESTONE: SCOPE MANAGEMENT PLAN APPROVAL | 1d | 2021-10-08 | 2021-10-08 | 11 |  |
| 19 | 7 | **EXECUTE** | 44d | 2021-10-11 | 2021-12-13 | 18 |  |
| 20 | 7.1 | **ANALYSIS** | 7d | 2021-10-11 | 2021-10-19 | 18 |  |
| 21 |  | ANALYZING THE CURRENT SYSTEM | 2d | 2021-10-11 | 2021-10-12 | 18, 11 |  |
| 22 |  | REQUIREMENT GATHERING | 2d | 2021-10-13 | 2021-10-14 | 21 | 0d |
| 23 |  | ANALYZE THE REQUIREMENTS | 2d | 2021-10-15 | 2021-10-18 | 22 |  |
| 24 |  | CLIENT APPROVAL | 1d | 2021-10-19 | 2021-10-19 | 23 | 0d |
| 25 | 7.2 | **DESIGN** | 4d | 2021-10-20 | 2021-10-25 | 20 |  |
| 26 |  | DEVELOPING ICT DIAGRAM | 2d | 2021-10-20 | 2021-10-21 | 24, 20 |  |
| 27 |  | ARCHITECTURAL DESIGN | 1d | 2021-10-22 | 2021-10-22 | 26 |  |
| 28 |  | CLIENT APPROVAL | 1d | 2021-10-25 | 2021-10-25 | 27 |  |
| 29 | 7.3 | **CONSTRUCTION** | 10d | 2021-10-26 | 2021-11-08 | 25 |  |
| 30 |  | UPGRADING NETWORKS | 2d | 2021-10-26 | 2021-10-27 | 28 |  |
| 31 |  | REPLACING WORKSTATIONS | 2d | 2021-10-28 | 2021-10-29 | 30 |  |
| 32 |  | REPLACING SERVERS | 2d | 2021-11-01 | 2021-11-02 | 31 |  |
| 33 |  | MIGRATING BACKUP STORAGE FROM ONPREMISE TO CLOUD | 3d | 2021-11-03 | 2021-11-05 | 32 |  |
| 34 |  | CLIENT APPROVAL | 1d | 2021-11-08 | 2021-11-08 | 33 |  |
| 35 | 7.4 | **INTEGRATION** | 6d | 2021-11-09 | 2021-11-16 | 29 |  |
| 36 |  | CONFIGURING NETWORKS | 2d | 2021-11-09 | 2021-11-10 | 34 |  |
| 37 |  | INSTALLING SOFTWARES IN WORKSTATIONS | 1d | 2021-11-11 | 2021-11-11 | 36 |  |
| 38 |  | SERVER MIGRATION | 1d | 2021-11-12 | 2021-11-12 | 37 |  |
| 39 |  | BACKUP STORAGE MIGRATION TO CLOUD | 2d | 2021-11-15 | 2021-11-16 | 38 |  |
| 40 | 7.5 | **TESTING** | 10d | 2021-11-17 | 2021-12-02 | 35 |  |
| 41 |  | DEVELOP A TEST PLAN | 1d | 2021-11-17 | 2021-11-17 |  |  |
| 42 |  | DEFINE TEST CASES | 1d | 2021-11-18 | 2021-11-18 | 41 |  |
| 43 | 7.5.3 | **HARDWARE AND SOFTWARE TESTING** | 6d | 2021-11-19 | 2021-11-30 | 42 |  |
| 44 |  | TESTING THE NETWORKS CONNECTIVITY | 1d | 2021-11-19 | 2021-11-19 | 36 |  |
| 45 |  | TESTING NEW WORKSTATIONS | 1d | 2021-11-22 | 2021-11-22 | 37 |  |
| 46 |  | TESTING SERVERS | 2d | 2021-11-23 | 2021-11-24 | 38 |  |
| 47 |  | PERFORM TESTING FOR BACKUP DATA ON CLOUD | 2d | 2021-11-29 | 2021-11-30 | 39 |  |
| 48 | 7.5.4 | **SYSTEM TESTING** | 2d | 2021-12-01 | 2021-12-02 | 43 |  |
| 49 |  | ANALYZING THE TEST RESULTS | 1d | 2021-12-01 | 2021-12-01 | 42 |  |
| 50 |  | CLIENT APPROVAL | 1d | 2021-12-02 | 2021-12-02 | 49 |  |
| 51 | 7.6 | **IMPLEMENTATION** | 5d | 2021-12-03 | 2021-12-09 | 40 |  |
| 52 |  | PLANNING A TRAINING PROGRAM | 1d | 2021-12-03 | 2021-12-03 | 50 |  |
| 53 |  | CONDUCTING THE TRAININGS | 2d | 2021-12-06 | 2021-12-07 | 52 |  |
| 54 |  | DOCUMENTATION | 1d | 2021-12-08 | 2021-12-08 | 50 |  |
| 55 |  | DELIVERABLE : PROJECT EXECUTION | 1d | 2021-12-09 | 2021-12-09 | 54 |  |
| 56 |  | MILESTONE - APPROVAL OF PROJECT EXECUTION | 1d | 2021-12-10 | 2021-12-10 | 51, 50 |  |
| 57 | 9 | **PROJECT CLOSURE** | 3d | 2021-12-13 | 2021-12-15 | 56 |  |
| 58 |  | PREPARE PROJECT REPORT AND PRESENTATION | 2d | 2021-12-13 | 2021-12-14 | 56 |  |
| 59 |  | PREPARE ANNUAL REPORT | 1d | 2021-12-15 | 2021-12-15 | 56 |  |
| 60 |  | MILESTONE - APPROVAL OF PROJECT REPORT | 1d | 2021-12-16 | 2021-12-16 | 57 |  |
| 61 | 11 | **PROJECT EVALUATION** | 1d | 2021-10-10 | 2021-10-10 | 60 |  |
| 62 |  | EVALUATING THE PROJECT SUCCESS | 1d | 2021-10-10 | 2021-10-10 |  |  |
| 63 |  | CONDUCTING SURVEYS | 1d | 2021-10-10 | 2021-10-10 |  |  |
| 64 |  | PROJECT TEAM EVALUATION | 1d | 2021-10-10 | 2021-10-10 |  |  |
| 65 |  | CONTIGENCY&OFFICESUPPLIES | 1d? | 2021-10-10 | 2021-10-10 |  |  |

## Version 2 (data date 2021-11-09, saved 2021-11-10, file Group3_Revised Plan.mpp.mpp)

Note of the change: ITProject-Management-Repo

Last finish 2021-12-16 → 2021-12-29 (+13d). Complete tasks 0 → 29.

Added:

| ID | Task | Duration | Start | Finish | Predecessors | Resources |
| --- | --- | --- | --- | --- | --- | --- |
| 16 | SECURITY PLANNING | 2d | 2021-10-04 A | 2021-10-05 A | 15SS | IT SECURITY CONSULTANT |
| 23 | CURRENT SYSTEM SECURITY ANALYSIS | 1d | 2021-10-12 A | 2021-10-12 A | 19 | IT SECURITY CONSULTANT |
| 26 | SECURITY REQUIREMENTS ANALYSIS | 1d | 2021-10-21 A | 2021-10-21 A | 25 | IT SECURITY CONSULTANT |
| 31 | IT SECURITY DESIGN | 1d | 2021-10-28 A | 2021-10-28 A | 30 | IT SECURITY CONSULTANT |
| 38 | VERIFYING THE SECURITY REQUIREMENTS OF BACKUP STORAGE | 1d | 2021-11-12 | 2021-11-12 | 37 | IT SECURITY CONSULTANT |
| 44 | SECURITY CHECKS FOR N/W ,WORKSTATIONS AND SERVER | 2d | 2021-11-22 | 2021-11-23 | 43, 42 | IT SECURITY CONSULTANT |
| 56 | SECURITY TESTING | 2d | 2021-12-13 | 2021-12-14 | 49, 54 | IT SECURITY CONSULTANT |

Changed:

| ID | Task | Start | Finish | Duration | Complete | Total float | Predecessors | Other |
| --- | --- | --- | --- | --- | --- | --- | --- | --- |
| 1 | **PROJECT INITIALIZATION** | 2021-09-02 A | 2021-09-20 A |  | 0% → 100% |  |  |  |
| 2 | Identify MOV | 2021-09-02 A | 2021-09-06 A |  | 0% → 100% | 0d → none |  |  |
| 3 | DEFINING ALTERNATIVES | 2021-09-07 A | 2021-09-10 A |  | 0% → 100% | 0d → none |  |  |
| 4 | TOTAL COST OF OWNERSHIP | 2021-09-13 A | 2021-09-15 A |  | 0% → 100% | 0d → none |  |  |
| 5 | TOTAL BENEFIT OF OWNERSHIP | 2021-09-16 A | 2021-09-17 A |  | 0% → 100% | 0d → none |  |  |
| 6 | BUSINESS CASE DELIVERABLE | 2021-09-20 A | 2021-09-20 A |  | 0% → 100% |  |  |  |
| 7 | MILESTONE : CLIENT APPROVAL OF BUSINESS CASE | 2021-09-21 A | 2021-09-21 A |  | 0% → 100% |  |  |  |
| 8 | **PROJECT CHARTER** | 2021-09-22 A | 2021-09-23 A |  | 0% → 100% |  |  |  |
| 9 | CREATING PROJECT CHARTER | 2021-09-22 A | 2021-09-23 A |  | 0% → 100% |  |  |  |
| 10 | MILESTONE:PROJECT CHARTER APPROVAL | 2021-09-24 A | 2021-09-24 A |  | 0% → 100% |  |  |  |
| 11 | **PROJECT PLANNING** | 2021-09-27 A | 2021-10-07 → 2021-10-08 A (+1d) | 9d → 10d | 0% → 100% |  |  |  |
| 12 | IDENTIFY SCOPE OF PROJECT | 2021-09-27 A | 2021-09-28 A |  | 0% → 100% |  |  |  |
| 13 | DESIGNING THE STRUCTURE CHART | 2021-09-29 A | 2021-09-29 A |  | 0% → 100% |  |  |  |
| 14 | CREATING THE WORK BREAKDOWN STRUCTURE | 2021-09-30 A | 2021-10-01 A |  | 0% → 100% |  |  |  |
| 15 | IDENTIFY AND ALLOCATE RESOURCES | 2021-10-04 A | 2021-10-04 A |  | 0% → 100% |  |  |  |
| 17 | ESTIMATING THE BUDGET | 2021-10-05 → 2021-10-06 A (+1d) | 2021-10-06 → 2021-10-07 A (+1d) |  | 0% → 100% |  | 15 → 15, 16 |  |
| 18 | DELIVARABLE : SCOPE MANGEMENT PLAN | 2021-10-07 → 2021-10-08 A (+1d) | 2021-10-07 → 2021-10-08 A (+1d) |  | 0% → 100% |  |  |  |
| 19 | MILESTONE: SCOPE MANAGEMENT PLAN APPROVAL | 2021-10-08 → 2021-10-11 A (+3d) | 2021-10-08 → 2021-10-11 A (+3d) |  | 0% → 100% |  |  |  |
| 20 | **EXECUTE** | 2021-10-11 → 2021-10-12 A (+1d) | 2021-12-13 → 2021-12-22 (+9d) | 44d → 50d | 0% → 40% |  |  |  |
| 21 | **ANALYSIS** | 2021-10-11 → 2021-10-12 A (+1d) | 2021-10-19 → 2021-10-22 A (+3d) | 7d → 9d | 0% → 100% |  |  |  |
| 22 | ANALYZING THE CURRENT SYSTEM | 2021-10-11 → 2021-10-12 A (+1d) | 2021-10-12 → 2021-10-13 A (+1d) |  | 0% → 100% |  |  |  |
| 24 | REQUIREMENT GATHERING | 2021-10-13 → 2021-10-15 A (+2d) | 2021-10-14 → 2021-10-18 A (+4d) |  | 0% → 100% | 0d → none | 22 → 22, 23 | constraint none → start no earlier than 2021-10-15 |
| 25 | ANALYZE THE REQUIREMENTS | 2021-10-15 → 2021-10-19 A (+4d) | 2021-10-18 → 2021-10-20 A (+2d) |  | 0% → 100% |  |  |  |
| 27 | CLIENT APPROVAL | 2021-10-19 → 2021-10-22 A (+3d) | 2021-10-19 → 2021-10-22 A (+3d) |  | 0% → 100% | 0d → none | 25 → 25, 26 | constraint none → start no earlier than 2021-10-22 |
| 28 | **DESIGN** | 2021-10-20 → 2021-10-25 A (+5d) | 2021-10-25 → 2021-10-29 A (+4d) | 4d → 5d | 0% → 100% |  |  |  |
| 29 | DEVELOPING ICT DIAGRAM | 2021-10-20 → 2021-10-25 A (+5d) | 2021-10-21 → 2021-10-26 A (+5d) |  | 0% → 100% |  |  |  |
| 30 | ARCHITECTURAL DESIGN | 2021-10-22 → 2021-10-27 A (+5d) | 2021-10-22 → 2021-10-27 A (+5d) |  | 0% → 100% |  |  |  |
| 32 | CLIENT APPROVAL | 2021-10-25 → 2021-10-29 A (+4d) | 2021-10-25 → 2021-10-29 A (+4d) |  | 0% → 100% |  | 30 → 30, 31 |  |
| 33 | **CONSTRUCTION** | 2021-10-26 → 2021-11-01 A (+6d) | 2021-11-08 → 2021-11-15 (+7d) | 10d → 11d | 0% → 55% |  |  |  |
| 34 | UPGRADING NETWORKS | 2021-10-26 → 2021-11-01 A (+6d) | 2021-10-27 → 2021-11-02 A (+6d) |  | 0% → 100% |  |  |  |
| 35 | REPLACING WORKSTATIONS | 2021-10-28 → 2021-11-03 A (+6d) | 2021-10-29 → 2021-11-04 A (+6d) |  | 0% → 100% |  |  |  |
| 36 | REPLACING SERVERS | 2021-11-01 → 2021-11-05 A (+4d) | 2021-11-02 → 2021-11-08 A (+6d) |  | 0% → 100% |  |  |  |
| 37 | MIGRATING BACKUP STORAGE FROM ONPREMISE TO CLOUD | 2021-11-03 → 2021-11-09 (+6d) | 2021-11-05 → 2021-11-11 (+6d) |  |  |  |  |  |
| 39 | CLIENT APPROVAL | 2021-11-08 → 2021-11-15 (+7d) | 2021-11-08 → 2021-11-15 (+7d) |  |  |  | 37 → 37, 38 |  |
| 40 | **INTEGRATION** | 2021-11-09 → 2021-11-16 (+7d) | 2021-11-16 → 2021-11-29 (+13d) | 6d → 8d |  |  |  |  |
| 41 | CONFIGURING NETWORKS | 2021-11-09 → 2021-11-16 (+7d) | 2021-11-10 → 2021-11-17 (+7d) |  |  |  |  |  |
| 42 | INSTALLING SOFTWARES IN WORKSTATIONS | 2021-11-11 → 2021-11-18 (+7d) | 2021-11-11 → 2021-11-18 (+7d) |  |  |  |  |  |
| 43 | SERVER MIGRATION | 2021-11-12 → 2021-11-19 (+7d) | 2021-11-12 → 2021-11-19 (+7d) |  |  |  |  |  |
| 45 | BACKUP STORAGE MIGRATION TO CLOUD | 2021-11-15 → 2021-11-24 (+9d) | 2021-11-16 → 2021-11-29 (+13d) |  |  |  | 43 → 44 |  |
| 46 | **TESTING** | 2021-11-17 → 2021-11-30 (+13d) | 2021-12-02 → 2021-12-15 (+13d) | 10d → 12d |  |  |  |  |
| 47 | DEVELOP A TEST PLAN | 2021-11-17 → 2021-11-30 (+13d) | 2021-11-17 → 2021-11-30 (+13d) |  |  |  | none → 40 |  |
| 48 | DEFINE TEST CASES | 2021-11-18 → 2021-12-01 (+13d) | 2021-11-18 → 2021-12-01 (+13d) |  |  |  |  |  |
| 49 | **HARDWARE AND SOFTWARE TESTING** | 2021-11-19 → 2021-12-02 (+13d) | 2021-11-30 → 2021-12-09 (+9d) |  |  |  |  |  |
| 50 | TESTING THE NETWORKS CONNECTIVITY | 2021-11-19 → 2021-12-02 (+13d) | 2021-11-19 → 2021-12-02 (+13d) |  |  |  |  |  |
| 51 | TESTING NEW WORKSTATIONS | 2021-11-22 → 2021-12-03 (+11d) | 2021-11-22 → 2021-12-03 (+11d) |  |  |  |  |  |
| 52 | TESTING SERVERS | 2021-11-23 → 2021-12-06 (+13d) | 2021-11-24 → 2021-12-07 (+13d) |  |  |  |  |  |
| 53 | PERFORM TESTING FOR BACKUP DATA ON CLOUD | 2021-11-29 → 2021-12-08 (+9d) | 2021-11-30 → 2021-12-09 (+9d) |  |  |  |  |  |
| 54 | **SYSTEM TESTING** | 2021-12-01 → 2021-12-10 (+9d) | 2021-12-02 → 2021-12-10 (+8d) | 2d → 1d |  |  |  |  |
| 55 | ANALYZING THE TEST RESULTS | 2021-12-01 → 2021-12-10 (+9d) | 2021-12-01 → 2021-12-10 (+9d) |  |  |  |  |  |
| 57 | CLIENT APPROVAL | 2021-12-02 → 2021-12-15 (+13d) | 2021-12-02 → 2021-12-15 (+13d) |  |  |  | 55 → 55, 56 |  |
| 58 | **IMPLEMENTATION** | 2021-12-03 → 2021-12-16 (+13d) | 2021-12-09 → 2021-12-22 (+13d) |  |  |  |  |  |
| 59 | PLANNING A TRAINING PROGRAM | 2021-12-03 → 2021-12-16 (+13d) | 2021-12-03 → 2021-12-16 (+13d) |  |  |  |  |  |
| 60 | CONDUCTING THE TRAININGS | 2021-12-06 → 2021-12-17 (+11d) | 2021-12-07 → 2021-12-20 (+13d) |  |  |  |  |  |
| 61 | DOCUMENTATION | 2021-12-08 → 2021-12-21 (+13d) | 2021-12-08 → 2021-12-21 (+13d) |  |  |  |  |  |
| 62 | DELIVERABLE : PROJECT EXECUTION | 2021-12-09 → 2021-12-22 (+13d) | 2021-12-09 → 2021-12-22 (+13d) |  |  |  |  |  |
| 63 | MILESTONE - APPROVAL OF PROJECT EXECUTION | 2021-12-10 → 2021-12-23 (+13d) | 2021-12-10 → 2021-12-23 (+13d) |  |  |  | 58, 57 → 58, 62 |  |
| 64 | **PROJECT CLOSURE** | 2021-12-13 → 2021-12-24 (+11d) | 2021-12-15 → 2021-12-28 (+13d) |  |  |  |  |  |
| 65 | PREPARE PROJECT REPORT AND PRESENTATION | 2021-12-13 → 2021-12-24 (+11d) | 2021-12-14 → 2021-12-27 (+13d) |  |  |  | 63 → 63, 58 |  |
| 66 | PREPARE ANNUAL REPORT | 2021-12-15 → 2021-12-28 (+13d) | 2021-12-15 → 2021-12-28 (+13d) |  |  |  | 63 → 63, 65 |  |
| 67 | MILESTONE - APPROVAL OF PROJECT REPORT | 2021-12-16 → 2021-12-29 (+13d) | 2021-12-16 → 2021-12-29 (+13d) |  |  |  |  |  |

## Version 3 (saved 2021-11-17, file Group3_Proposed Solution Plan.mpp)

Note of the change: ITProject-Management-Repo

Last finish 2021-12-29 → 2021-12-07 (-22d). Complete tasks 29 → 0.

Added:

| ID | Task | Duration | Start | Finish | Predecessors | Resources |
| --- | --- | --- | --- | --- | --- | --- |
| 44 | SECURITY CHECKS FOR N/W,WORKSTATIONS AND SERVERS | 2d | 2021-11-02 | 2021-11-03 | 41, 42, 43 | IT SECURITY CONSULTANT |

Removed: 44 SECURITY CHECKS FOR N/W ,WORKSTATIONS AND SERVER; 72 CONTIGENCY&OFFICESUPPLIES

Changed:

| ID | Task | Start | Finish | Duration | Complete | Total float | Predecessors | Other |
| --- | --- | --- | --- | --- | --- | --- | --- | --- |
| 1 | **PROJECT INITIALIZATION** | 2021-09-02 A → 2021-09-02 | 2021-09-20 A → 2021-09-09 (-11d) | 13d → 6d | 100% → 0% |  |  |  |
| 2 | Identify MOV | 2021-09-02 A → 2021-09-02 | 2021-09-06 A → 2021-09-03 (-3d) | 3d → 2d | 100% → 0% | none → 0d |  |  |
| 3 | DEFINING ALTERNATIVES | 2021-09-07 A → 2021-09-06 (-1d) | 2021-09-10 A → 2021-09-07 (-3d) | 4d → 2d | 100% → 0% | none → 0d |  |  |
| 4 | TOTAL COST OF OWNERSHIP | 2021-09-13 A → 2021-09-08 (-5d) | 2021-09-15 A → 2021-09-08 (-7d) | 3d → 1d | 100% → 0% | none → 0d |  |  |
| 5 | TOTAL BENEFIT OF OWNERSHIP | 2021-09-16 A → 2021-09-08 (-8d) | 2021-09-17 A → 2021-09-08 (-9d) | 2d → 1d | 100% → 0% | none → 0d | 4 → 4SS | resources PROJECT MANAGER; TECH 2 → TECH 3 |
| 6 | BUSINESS CASE DELIVERABLE | 2021-09-20 A → 2021-09-09 (-11d) | 2021-09-20 A → 2021-09-09 (-11d) |  | 100% → 0% |  |  | resources PROJECT MANAGER → PROJECT MANAGER; OfficeSupplies |
| 7 | MILESTONE : CLIENT APPROVAL OF BUSINESS CASE | 2021-09-21 A → 2021-09-10 (-11d) | 2021-09-21 A → 2021-09-10 (-11d) |  | 100% → 0% |  |  |  |
| 8 | **PROJECT CHARTER** | 2021-09-22 A → 2021-09-13 (-9d) | 2021-09-23 A → 2021-09-14 (-9d) |  | 100% → 0% |  |  |  |
| 9 | CREATING PROJECT CHARTER | 2021-09-22 A → 2021-09-13 (-9d) | 2021-09-23 A → 2021-09-14 (-9d) |  | 100% → 0% |  |  | resources PROJECT MANAGER → PROJECT MANAGER; OfficeSupplies |
| 10 | MILESTONE:PROJECT CHARTER APPROVAL | 2021-09-24 A → 2021-09-15 (-9d) | 2021-09-24 A → 2021-09-15 (-9d) |  | 100% → 0% |  |  |  |
| 11 | **PROJECT PLANNING** | 2021-09-27 A → 2021-09-16 (-11d) | 2021-10-08 A → 2021-09-27 (-11d) | 10d → 8d | 100% → 0% |  |  | baseline finish 2021-10-07 → 2021-10-08 |
| 12 | IDENTIFY SCOPE OF PROJECT | 2021-09-27 A → 2021-09-16 (-11d) | 2021-09-28 A → 2021-09-17 (-11d) |  | 100% → 0% |  |  | resources PROJECT MANAGER; TECH 2; PROJECT SPONSOR → PROJECT MANAGER; PROJECT SPONSOR |
| 13 | DESIGNING THE STRUCTURE CHART | 2021-09-29 A → 2021-09-17 (-12d) | 2021-09-29 A → 2021-09-17 (-12d) |  | 100% → 0% |  | 12 → 12SS |  |
| 14 | CREATING THE WORK BREAKDOWN STRUCTURE | 2021-09-30 A → 2021-09-20 (-10d) | 2021-10-01 A → 2021-09-21 (-10d) |  | 100% → 0% |  |  |  |
| 15 | IDENTIFY AND ALLOCATE RESOURCES | 2021-10-04 A → 2021-09-22 (-12d) | 2021-10-04 A → 2021-09-22 (-12d) |  | 100% → 0% |  |  | resources PROJECT MANAGER → TECH 2 |
| 16 | SECURITY PLANNING | 2021-10-04 A → 2021-09-22 (-12d) | 2021-10-05 A → 2021-09-22 (-13d) | 2d → 1d | 100% → 0% |  |  | baseline start none → 2021-10-04; baseline finish none → 2021-10-05 |
| 17 | ESTIMATING THE BUDGET | 2021-10-06 A → 2021-09-23 (-13d) | 2021-10-07 A → 2021-09-24 (-13d) |  | 100% → 0% |  | 15, 16 → 15 | baseline start 2021-10-05 → 2021-10-06; baseline finish 2021-10-06 → 2021-10-07 |
| 18 | DELIVARABLE : SCOPE MANGEMENT PLAN | 2021-10-08 A → 2021-09-27 (-11d) | 2021-10-08 A → 2021-09-27 (-11d) |  | 100% → 0% |  |  | resources PROJECT MANAGER; TECH 2 → PROJECT MANAGER; TECH 2; OfficeSupplies; baseline start 2021-10-07 → 2021-10-08; baseline finish 2021-10-07 → 2021-10-08 |
| 19 | MILESTONE: SCOPE MANAGEMENT PLAN APPROVAL | 2021-10-11 A → 2021-09-28 (-13d) | 2021-10-11 A → 2021-09-28 (-13d) |  | 100% → 0% |  |  | baseline start 2021-10-08 → 2021-10-11; baseline finish 2021-10-08 → 2021-10-11 |
| 20 | **EXECUTE** | 2021-10-12 A → 2021-10-12 | 2021-12-22 → 2021-11-30 (-22d) | 50d → 34d | 40% → 0% |  |  | baseline start 2021-10-11 → 2021-10-12; baseline finish 2021-12-13 → 2021-12-21 |
| 21 | **ANALYSIS** | 2021-10-12 A → 2021-09-29 (-13d) | 2021-10-22 A → 2021-10-07 (-15d) | 9d → 7d | 100% → 0% |  |  | baseline start 2021-10-11 → 2021-10-12; baseline finish 2021-10-19 → 2021-10-21 |
| 22 | ANALYZING THE CURRENT SYSTEM | 2021-10-12 A → 2021-09-29 (-13d) | 2021-10-13 A → 2021-09-30 (-13d) |  | 100% → 0% |  |  | resources PROJECT MANAGER; TECH 1; TECH 2; TECH 3 → PROJECT MANAGER; TECH 1; baseline start 2021-10-11 → 2021-10-12; baseline finish 2021-10-12 → 2021-10-13 |
| 23 | CURRENT SYSTEM SECURITY ANALYSIS | 2021-10-12 A → 2021-09-28 (-14d) | 2021-10-12 A → 2021-09-28 (-14d) |  | 100% → 0% |  | 19 → 19SS | baseline start none → 2021-10-12; baseline finish none → 2021-10-12 |
| 24 | REQUIREMENT GATHERING | 2021-10-15 A → 2021-10-04 (-11d) | 2021-10-18 A → 2021-10-05 (-13d) |  | 100% → 0% | none → 2d |  | constraint start no earlier than 2021-10-15 → start no earlier than 2021-10-04; resources TECH 1; TECH 3 → TECH 3; baseline start 2021-10-13 → 2021-10-14; baseline finish 2021-10-14 → 2021-10-15 |
| 25 | ANALYZE THE REQUIREMENTS | 2021-10-19 A → 2021-10-06 (-13d) | 2021-10-20 A → 2021-10-06 (-14d) | 2d → 1d | 100% → 0% |  |  | baseline start 2021-10-15 → 2021-10-18; baseline finish 2021-10-18 → 2021-10-19 |
| 26 | SECURITY REQUIREMENTS ANALYSIS | 2021-10-21 A → 2021-10-06 (-15d) | 2021-10-21 A → 2021-10-06 (-15d) |  | 100% → 0% |  | 25 → 25SS | baseline start none → 2021-10-20; baseline finish none → 2021-10-20 |
| 27 | CLIENT APPROVAL | 2021-10-22 A → 2021-10-07 (-15d) | 2021-10-22 A → 2021-10-07 (-15d) |  | 100% → 0% | none → 2d |  | constraint start no earlier than 2021-10-22 → start no earlier than 2021-10-07; baseline start 2021-10-19 → 2021-10-21; baseline finish 2021-10-19 → 2021-10-21 |
| 28 | **DESIGN** | 2021-10-25 A → 2021-10-11 (-14d) | 2021-10-29 A → 2021-10-14 (-15d) | 5d → 4d | 100% → 0% |  |  | baseline start 2021-10-20 → 2021-10-22; baseline finish 2021-10-25 → 2021-10-28 |
| 29 | DEVELOPING ICT DIAGRAM | 2021-10-25 A → 2021-10-11 (-14d) | 2021-10-26 A → 2021-10-12 (-14d) |  | 100% → 0% |  |  | baseline start 2021-10-20 → 2021-10-22; baseline finish 2021-10-21 → 2021-10-25 |
| 30 | ARCHITECTURAL DESIGN | 2021-10-27 A → 2021-10-13 (-14d) | 2021-10-27 A → 2021-10-13 (-14d) |  | 100% → 0% |  |  | baseline start 2021-10-22 → 2021-10-26; baseline finish 2021-10-22 → 2021-10-26 |
| 31 | IT SECURITY DESIGN | 2021-10-28 A → 2021-10-13 (-15d) | 2021-10-28 A → 2021-10-13 (-15d) |  | 100% → 0% |  | 30 → 30SS | baseline start none → 2021-10-27; baseline finish none → 2021-10-27 |
| 32 | CLIENT APPROVAL | 2021-10-29 A → 2021-10-14 (-15d) | 2021-10-29 A → 2021-10-14 (-15d) |  | 100% → 0% |  |  | baseline start 2021-10-25 → 2021-10-28; baseline finish 2021-10-25 → 2021-10-28 |
| 33 | **CONSTRUCTION** | 2021-11-01 A → 2021-10-18 (-14d) | 2021-11-15 → 2021-10-26 (-20d) | 11d → 7d | 55% → 0% |  |  | baseline start 2021-10-26 → 2021-10-29; baseline finish 2021-11-08 → 2021-11-12 |
| 34 | UPGRADING NETWORKS | 2021-11-01 A → 2021-10-18 (-14d) | 2021-11-02 A → 2021-10-19 (-14d) |  | 100% → 0% |  |  | resources PROJECT MANAGER; TECH 1 → PROJECT MANAGER; TECH 1; Routers [500%]; Switches [200%]; Contigency [0.1%]; baseline start 2021-10-26 → 2021-10-29; baseline finish 2021-10-27 → 2021-11-01 |
| 35 | REPLACING WORKSTATIONS | 2021-11-03 A → 2021-10-18 (-16d) | 2021-11-04 A → 2021-10-19 (-16d) |  | 100% → 0% |  | 34 → 34SS | resources TECH 2 → TECH 2; Desktops [500%]; Laptops [500%]; Contigency [0.1%]; baseline start 2021-10-28 → 2021-11-02; baseline finish 2021-10-29 → 2021-11-03 |
| 36 | REPLACING SERVERS | 2021-11-05 A → 2021-10-20 (-16d) | 2021-11-08 A → 2021-10-20 (-19d) | 2d → 1d | 100% → 0% |  |  | resources PROJECT MANAGER; TECH 3 → PROJECT MANAGER; TECH 3; Servers [200%]; Contigency [0.1%]; baseline start 2021-11-01 → 2021-11-04; baseline finish 2021-11-02 → 2021-11-05 |
| 37 | MIGRATING BACKUP STORAGE FROM ONPREMISE TO CLOUD | 2021-11-09 → 2021-10-21 (-19d) | 2021-11-11 → 2021-10-22 (-20d) | 3d → 2d |  |  |  | resources PROJECT MANAGER; TECH 2; TECH 3 → PROJECT MANAGER; TECH 2; TECH 3; cloud storage (AWS) [0.1%]; baseline start 2021-11-03 → 2021-11-08; baseline finish 2021-11-05 → 2021-11-10 |
| 38 | VERIFYING THE SECURITY REQUIREMENTS OF BACKUP STORAGE | 2021-11-12 → 2021-10-25 (-18d) | 2021-11-12 → 2021-10-25 (-18d) |  |  |  |  | baseline start none → 2021-11-11; baseline finish none → 2021-11-11 |
| 39 | CLIENT APPROVAL | 2021-11-15 → 2021-10-26 (-20d) | 2021-11-15 → 2021-10-26 (-20d) |  |  |  |  | baseline start 2021-11-08 → 2021-11-12; baseline finish 2021-11-08 → 2021-11-12 |
| 40 | **INTEGRATION** | 2021-11-16 → 2021-10-27 (-20d) | 2021-11-29 → 2021-11-03 (-26d) | 8d → 6d |  |  |  | baseline start 2021-11-09 → 2021-11-15; baseline finish 2021-11-16 → 2021-11-24 |
| 41 | CONFIGURING NETWORKS | 2021-11-16 → 2021-10-27 (-20d) | 2021-11-17 → 2021-10-28 (-20d) |  |  |  |  | baseline start 2021-11-09 → 2021-11-15; baseline finish 2021-11-10 → 2021-11-16 |
| 42 | INSTALLING SOFTWARES IN WORKSTATIONS | 2021-11-18 → 2021-10-29 (-20d) | 2021-11-18 → 2021-10-29 (-20d) |  |  |  |  | resources TECH 2; PUBLIC SAFETY IT SPECIALIST → TECH 2; PUBLIC SAFETY IT SPECIALIST; Software Licensing [0.1%]; Contigency [0.1%]; baseline start 2021-11-11 → 2021-11-17; baseline finish 2021-11-11 → 2021-11-17 |
| 43 | SERVER MIGRATION | 2021-11-19 → 2021-11-01 (-18d) | 2021-11-19 → 2021-11-01 (-18d) |  |  |  |  | baseline start 2021-11-12 → 2021-11-18; baseline finish 2021-11-12 → 2021-11-18 |
| 45 | BACKUP STORAGE MIGRATION TO CLOUD | 2021-11-24 → 2021-11-02 (-22d) | 2021-11-29 → 2021-11-03 (-26d) |  |  |  | SECURITY CHECKS FOR N/W ,WORKSTATIONS AND SERVER → 43, 44SS | resources TECH 1; TECH 3; IT TECHNICAL CO-OD; PROJECT MANAGER → IT TECHNICAL CO-OD; PROJECT MANAGER; baseline start 2021-11-15 → 2021-11-23; baseline finish 2021-11-16 → 2021-11-24 |
| 46 | **TESTING** | 2021-11-30 → 2021-11-08 (-22d) | 2021-12-15 → 2021-11-22 (-23d) | 12d → 11d |  |  |  | baseline start 2021-11-17 → 2021-11-29; baseline finish 2021-12-02 → 2021-12-14 |
| 47 | DEVELOP A TEST PLAN | 2021-11-30 → 2021-11-08 (-22d) | 2021-11-30 → 2021-11-08 (-22d) |  |  |  |  | baseline start 2021-11-17 → 2021-11-29; baseline finish 2021-11-17 → 2021-11-29 |
| 48 | DEFINE TEST CASES | 2021-12-01 → 2021-11-09 (-22d) | 2021-12-01 → 2021-11-09 (-22d) |  |  |  |  | resources PROJECT MANAGER; TECH 1; IT TECHNICAL CO-OD → TECH 1; PUBLIC SAFETY IT SPECIALIST; baseline start 2021-11-18 → 2021-11-30; baseline finish 2021-11-18 → 2021-11-30 |
| 49 | **HARDWARE AND SOFTWARE TESTING** | 2021-12-02 → 2021-11-10 (-22d) | 2021-12-09 → 2021-11-16 (-23d) | 6d → 5d |  |  |  | baseline start 2021-11-19 → 2021-12-01; baseline finish 2021-11-30 → 2021-12-08 |
| 50 | TESTING THE NETWORKS CONNECTIVITY | 2021-12-02 → 2021-11-10 (-22d) | 2021-12-02 → 2021-11-10 (-22d) |  |  |  |  | resources IT TECHNICAL CO-OD; TECH 1; PROJECT MANAGER → IT TECHNICAL CO-OD; PROJECT MANAGER; TECH 2; baseline start 2021-11-19 → 2021-12-01; baseline finish 2021-11-19 → 2021-12-01 |
| 51 | TESTING NEW WORKSTATIONS | 2021-12-03 → 2021-11-11 (-22d) | 2021-12-03 → 2021-11-11 (-22d) |  |  |  |  | baseline start 2021-11-22 → 2021-12-02; baseline finish 2021-11-22 → 2021-12-02 |
| 52 | TESTING SERVERS | 2021-12-06 → 2021-11-12 (-24d) | 2021-12-07 → 2021-11-12 (-25d) | 2d → 1d |  |  |  | baseline start 2021-11-23 → 2021-12-03; baseline finish 2021-11-24 → 2021-12-06 |
| 53 | PERFORM TESTING FOR BACKUP DATA ON CLOUD | 2021-12-08 → 2021-11-15 (-23d) | 2021-12-09 → 2021-11-16 (-23d) |  |  |  |  | baseline start 2021-11-29 → 2021-12-07; baseline finish 2021-11-30 → 2021-12-08 |
| 54 | **SYSTEM TESTING** | 2021-12-10 → 2021-11-17 (-23d) | 2021-12-10 → 2021-11-17 (-23d) |  |  |  |  | baseline start 2021-12-01 → 2021-12-09; baseline finish 2021-12-02 → 2021-12-09 |
| 55 | ANALYZING THE TEST RESULTS | 2021-12-10 → 2021-11-17 (-23d) | 2021-12-10 → 2021-11-17 (-23d) |  |  |  |  | resources IT TECHNICAL CO-OD; PROJECT MANAGER; TECH 1 → IT TECHNICAL CO-OD; PROJECT MANAGER; TECH 1; OfficeSupplies; baseline start 2021-12-01 → 2021-12-09; baseline finish 2021-12-01 → 2021-12-09 |
| 56 | SECURITY TESTING | 2021-12-13 → 2021-11-18 (-25d) | 2021-12-14 → 2021-11-19 (-25d) |  |  |  |  | baseline start none → 2021-12-10; baseline finish none → 2021-12-13 |
| 57 | CLIENT APPROVAL | 2021-12-15 → 2021-11-22 (-23d) | 2021-12-15 → 2021-11-22 (-23d) |  |  |  |  | baseline start 2021-12-02 → 2021-12-14; baseline finish 2021-12-02 → 2021-12-14 |
| 58 | **IMPLEMENTATION** | 2021-12-16 → 2021-11-23 (-23d) | 2021-12-22 → 2021-11-30 (-22d) | 5d → 4d |  |  |  | baseline start 2021-12-03 → 2021-12-15; baseline finish 2021-12-09 → 2021-12-21 |
| 59 | PLANNING A TRAINING PROGRAM | 2021-12-16 → 2021-11-23 (-23d) | 2021-12-16 → 2021-11-23 (-23d) |  |  |  |  | resources PROJECT MANAGER; PUBLIC SAFETY IT SPECIALIST → PROJECT MANAGER; PUBLIC SAFETY IT SPECIALIST; IT TECHNICAL CO-OD; baseline start 2021-12-03 → 2021-12-15; baseline finish 2021-12-03 → 2021-12-15 |
| 60 | CONDUCTING THE TRAININGS | 2021-12-17 → 2021-11-24 (-23d) | 2021-12-20 → 2021-11-29 (-21d) |  |  |  |  | resources TECH 1; TECH 2 → TECH 1; TECH 2; Training [0.1%]; OfficeSupplies; Maintenance and Support [0.1%]; baseline start 2021-12-06 → 2021-12-16; baseline finish 2021-12-07 → 2021-12-17 |
| 61 | DOCUMENTATION | 2021-12-21 → 2021-11-29 (-22d) | 2021-12-21 → 2021-11-29 (-22d) |  |  |  |  | resources PROJECT MANAGER; TECH 3 → PROJECT MANAGER; TECH 3; OfficeSupplies; baseline start 2021-12-08 → 2021-12-20; baseline finish 2021-12-08 → 2021-12-20 |
| 62 | DELIVERABLE : PROJECT EXECUTION | 2021-12-22 → 2021-11-30 (-22d) | 2021-12-22 → 2021-11-30 (-22d) |  |  |  |  | resources PROJECT MANAGER → PROJECT MANAGER; OfficeSupplies; baseline start 2021-12-09 → 2021-12-21; baseline finish 2021-12-09 → 2021-12-21 |
| 63 | MILESTONE - APPROVAL OF PROJECT EXECUTION | 2021-12-23 → 2021-12-01 (-22d) | 2021-12-23 → 2021-12-01 (-22d) |  |  |  |  | baseline start 2021-12-10 → 2021-12-22; baseline finish 2021-12-10 → 2021-12-22 |
| 64 | **PROJECT CLOSURE** | 2021-12-24 → 2021-12-02 (-22d) | 2021-12-28 → 2021-12-06 (-22d) |  |  |  |  | baseline start 2021-12-13 → 2021-12-27; baseline finish 2021-12-15 → 2021-12-29 |
| 65 | PREPARE PROJECT REPORT AND PRESENTATION | 2021-12-24 → 2021-12-02 (-22d) | 2021-12-27 → 2021-12-03 (-24d) |  |  |  |  | resources PROJECT MANAGER; TECH 1 → PROJECT MANAGER; TECH 1; Contigency [0.1%]; baseline start 2021-12-13 → 2021-12-23; baseline finish 2021-12-14 → 2021-12-24 |
| 66 | PREPARE ANNUAL REPORT | 2021-12-28 → 2021-12-06 (-22d) | 2021-12-28 → 2021-12-06 (-22d) |  |  |  |  | resources PROJECT MANAGER; TECH 1; TECH 2; TECH 3 → PROJECT MANAGER; TECH 1; TECH 2; TECH 3; OfficeSupplies; baseline start 2021-12-15 → 2021-12-27; baseline finish 2021-12-15 → 2021-12-27 |
| 67 | MILESTONE - APPROVAL OF PROJECT REPORT | 2021-12-29 → 2021-12-07 (-22d) | 2021-12-29 → 2021-12-07 (-22d) |  |  |  |  | baseline start 2021-12-16 → 2021-12-30; baseline finish 2021-12-16 → 2021-12-30 |
| 68 | **PROJECT EVALUATION** | 2021-10-10 → 2021-09-02 (-38d) | 2021-10-10 → 2021-09-02 (-38d) |  |  |  |  | baseline start 2021-10-10 → 2021-09-02; baseline finish 2021-10-10 → 2021-09-02 |
| 69 | EVALUATING THE PROJECT SUCCESS | 2021-10-10 → 2021-09-02 (-38d) | 2021-10-10 → 2021-09-02 (-38d) |  |  |  |  | baseline start 2021-10-10 → 2021-09-02; baseline finish 2021-10-10 → 2021-09-02 |
| 70 | CONDUCTING SURVEYS | 2021-10-10 → 2021-09-02 (-38d) | 2021-10-10 → 2021-09-02 (-38d) |  |  |  |  | baseline start 2021-10-10 → 2021-09-02; baseline finish 2021-10-10 → 2021-09-02 |
| 71 | PROJECT TEAM EVALUATION | 2021-10-10 → 2021-09-02 (-38d) | 2021-10-10 → 2021-09-02 (-38d) |  |  |  |  | baseline start 2021-10-10 → 2021-09-02; baseline finish 2021-10-10 → 2021-09-02 |

## Version 4 (data date 2021-10-12, saved 2021-11-18, file Group3_Revised Plan_final.mpp)

Note of the change: ITProject-Management-Repo

Last finish 2021-12-07 → 2021-12-30 (+23d).

Changed:

| ID | Task | Start | Finish | Duration | Total float | Predecessors | Other |
| --- | --- | --- | --- | --- | --- | --- | --- |
| 1 | **PROJECT INITIALIZATION** |  | 2021-09-09 → 2021-09-20 (+11d) | 6d → 13d |  |  |  |
| 2 | Identify MOV |  | 2021-09-03 → 2021-09-06 (+3d) | 2d → 3d |  |  |  |
| 3 | DEFINING ALTERNATIVES | 2021-09-06 → 2021-09-07 (+1d) | 2021-09-07 → 2021-09-10 (+3d) | 2d → 4d |  |  |  |
| 4 | TOTAL COST OF OWNERSHIP | 2021-09-08 → 2021-09-13 (+5d) | 2021-09-08 → 2021-09-15 (+7d) | 1d → 3d |  |  |  |
| 5 | TOTAL BENEFIT OF OWNERSHIP | 2021-09-08 → 2021-09-16 (+8d) | 2021-09-08 → 2021-09-17 (+9d) | 1d → 2d |  | 4SS → 4 | resources TECH 3 → PROJECT MANAGER; TECH 2 |
| 6 | BUSINESS CASE DELIVERABLE | 2021-09-09 → 2021-09-20 (+11d) | 2021-09-09 → 2021-09-20 (+11d) |  |  |  |  |
| 7 | MILESTONE : CLIENT APPROVAL OF BUSINESS CASE | 2021-09-10 → 2021-09-21 (+11d) | 2021-09-10 → 2021-09-21 (+11d) |  |  |  |  |
| 8 | **PROJECT CHARTER** | 2021-09-13 → 2021-09-22 (+9d) | 2021-09-14 → 2021-09-23 (+9d) |  |  |  |  |
| 9 | CREATING PROJECT CHARTER | 2021-09-13 → 2021-09-22 (+9d) | 2021-09-14 → 2021-09-23 (+9d) |  |  |  |  |
| 10 | MILESTONE:PROJECT CHARTER APPROVAL | 2021-09-15 → 2021-09-24 (+9d) | 2021-09-15 → 2021-09-24 (+9d) |  |  |  |  |
| 11 | **PROJECT PLANNING** | 2021-09-16 → 2021-09-27 (+11d) | 2021-09-27 → 2021-10-08 (+11d) | 8d → 10d |  |  | baseline finish 2021-10-08 → 2021-10-07 |
| 12 | IDENTIFY SCOPE OF PROJECT | 2021-09-16 → 2021-09-27 (+11d) | 2021-09-17 → 2021-09-28 (+11d) |  |  |  | resources PROJECT MANAGER; PROJECT SPONSOR → PROJECT MANAGER; TECH 2; PROJECT SPONSOR |
| 13 | DESIGNING THE STRUCTURE CHART | 2021-09-17 → 2021-09-29 (+12d) | 2021-09-17 → 2021-09-29 (+12d) |  |  | 12SS → 12 |  |
| 14 | CREATING THE WORK BREAKDOWN STRUCTURE | 2021-09-20 → 2021-09-30 (+10d) | 2021-09-21 → 2021-10-01 (+10d) |  |  |  |  |
| 15 | IDENTIFY AND ALLOCATE RESOURCES | 2021-09-22 → 2021-10-04 (+12d) | 2021-09-22 → 2021-10-04 (+12d) |  |  |  | resources TECH 2 → PROJECT MANAGER |
| 16 | SECURITY PLANNING | 2021-09-22 → 2021-10-04 (+12d) | 2021-09-22 → 2021-10-05 (+13d) | 1d → 2d |  |  | baseline start 2021-10-04 → none; baseline finish 2021-10-05 → none |
| 17 | ESTIMATING THE BUDGET | 2021-09-23 → 2021-10-06 (+13d) | 2021-09-24 → 2021-10-07 (+13d) |  |  |  | baseline start 2021-10-06 → 2021-10-05; baseline finish 2021-10-07 → 2021-10-06 |
| 18 | DELIVARABLE : SCOPE MANGEMENT PLAN | 2021-09-27 → 2021-10-08 (+11d) | 2021-09-27 → 2021-10-08 (+11d) |  |  |  | baseline start 2021-10-08 → 2021-10-07; baseline finish 2021-10-08 → 2021-10-07 |
| 19 | MILESTONE: SCOPE MANAGEMENT PLAN APPROVAL | 2021-09-28 → 2021-10-11 (+13d) | 2021-09-28 → 2021-10-11 (+13d) |  |  |  | baseline start 2021-10-11 → 2021-10-08; baseline finish 2021-10-11 → 2021-10-08 |
| 20 | **EXECUTE** |  | 2021-11-30 → 2021-12-21 (+21d) | 34d → 49d |  |  | baseline start 2021-10-12 → 2021-10-11; baseline finish 2021-12-21 → 2021-12-13 |
| 21 | **ANALYSIS** | 2021-09-29 → 2021-10-12 (+13d) | 2021-10-07 → 2021-10-21 (+14d) | 7d → 8d |  |  | baseline start 2021-10-12 → 2021-10-11; baseline finish 2021-10-21 → 2021-10-19 |
| 22 | ANALYZING THE CURRENT SYSTEM | 2021-09-29 → 2021-10-12 (+13d) | 2021-09-30 → 2021-10-13 (+13d) |  |  |  | resources PROJECT MANAGER; TECH 1 → PROJECT MANAGER; TECH 1; TECH 2; TECH 3; baseline start 2021-10-12 → 2021-10-11; baseline finish 2021-10-13 → 2021-10-12 |
| 23 | CURRENT SYSTEM SECURITY ANALYSIS | 2021-09-28 → 2021-10-12 (+14d) | 2021-09-28 → 2021-10-12 (+14d) |  |  | 19SS → 19 | baseline start 2021-10-12 → none; baseline finish 2021-10-12 → none |
| 24 | REQUIREMENT GATHERING | 2021-10-04 → 2021-10-14 (+10d) | 2021-10-05 → 2021-10-15 (+10d) |  | 2d → 0d |  | constraint start no earlier than 2021-10-04 → start no earlier than 2021-10-14; resources TECH 3 → TECH 1; TECH 3; baseline start 2021-10-14 → 2021-10-13; baseline finish 2021-10-15 → 2021-10-14 |
| 25 | ANALYZE THE REQUIREMENTS | 2021-10-06 → 2021-10-18 (+12d) | 2021-10-06 → 2021-10-19 (+13d) | 1d → 2d |  |  | baseline start 2021-10-18 → 2021-10-15; baseline finish 2021-10-19 → 2021-10-18 |
| 26 | SECURITY REQUIREMENTS ANALYSIS | 2021-10-06 → 2021-10-20 (+14d) | 2021-10-06 → 2021-10-20 (+14d) |  |  | 25SS → 25 | baseline start 2021-10-20 → none; baseline finish 2021-10-20 → none |
| 27 | CLIENT APPROVAL | 2021-10-07 → 2021-10-21 (+14d) | 2021-10-07 → 2021-10-21 (+14d) |  | 2d → 0d |  | constraint start no earlier than 2021-10-07 → start no earlier than 2021-10-21; baseline start 2021-10-21 → 2021-10-19; baseline finish 2021-10-21 → 2021-10-19 |
| 28 | **DESIGN** | 2021-10-11 → 2021-10-22 (+11d) | 2021-10-14 → 2021-10-28 (+14d) | 4d → 5d |  |  | baseline start 2021-10-22 → 2021-10-20; baseline finish 2021-10-28 → 2021-10-25 |
| 29 | DEVELOPING ICT DIAGRAM | 2021-10-11 → 2021-10-22 (+11d) | 2021-10-12 → 2021-10-25 (+13d) |  |  |  | baseline start 2021-10-22 → 2021-10-20; baseline finish 2021-10-25 → 2021-10-21 |
| 30 | ARCHITECTURAL DESIGN | 2021-10-13 → 2021-10-26 (+13d) | 2021-10-13 → 2021-10-26 (+13d) |  |  |  | baseline start 2021-10-26 → 2021-10-22; baseline finish 2021-10-26 → 2021-10-22 |
| 31 | IT SECURITY DESIGN | 2021-10-13 → 2021-10-27 (+14d) | 2021-10-13 → 2021-10-27 (+14d) |  |  | 30SS → 30 | baseline start 2021-10-27 → none; baseline finish 2021-10-27 → none |
| 32 | CLIENT APPROVAL | 2021-10-14 → 2021-10-28 (+14d) | 2021-10-14 → 2021-10-28 (+14d) |  |  |  | baseline start 2021-10-28 → 2021-10-25; baseline finish 2021-10-28 → 2021-10-25 |
| 33 | **CONSTRUCTION** | 2021-10-18 → 2021-10-29 (+11d) | 2021-10-26 → 2021-11-12 (+17d) | 7d → 11d |  |  | baseline start 2021-10-29 → 2021-10-26; baseline finish 2021-11-12 → 2021-11-08 |
| 34 | UPGRADING NETWORKS | 2021-10-18 → 2021-10-29 (+11d) | 2021-10-19 → 2021-11-01 (+13d) |  |  |  | baseline start 2021-10-29 → 2021-10-26; baseline finish 2021-11-01 → 2021-10-27 |
| 35 | REPLACING WORKSTATIONS | 2021-10-18 → 2021-11-02 (+15d) | 2021-10-19 → 2021-11-03 (+15d) |  |  | 34SS → 34 | baseline start 2021-11-02 → 2021-10-28; baseline finish 2021-11-03 → 2021-10-29 |
| 36 | REPLACING SERVERS | 2021-10-20 → 2021-11-04 (+15d) | 2021-10-20 → 2021-11-05 (+16d) | 1d → 2d |  |  | baseline start 2021-11-04 → 2021-11-01; baseline finish 2021-11-05 → 2021-11-02 |
| 37 | MIGRATING BACKUP STORAGE FROM ONPREMISE TO CLOUD | 2021-10-21 → 2021-11-08 (+18d) | 2021-10-22 → 2021-11-10 (+19d) | 2d → 3d |  |  | baseline start 2021-11-08 → 2021-11-03; baseline finish 2021-11-10 → 2021-11-05 |
| 38 | VERIFYING THE SECURITY REQUIREMENTS OF BACKUP STORAGE | 2021-10-25 → 2021-11-11 (+17d) | 2021-10-25 → 2021-11-11 (+17d) |  |  |  | baseline start 2021-11-11 → none; baseline finish 2021-11-11 → none |
| 39 | CLIENT APPROVAL | 2021-10-26 → 2021-11-12 (+17d) | 2021-10-26 → 2021-11-12 (+17d) |  |  |  | baseline start 2021-11-12 → 2021-11-08; baseline finish 2021-11-12 → 2021-11-08 |
| 40 | **INTEGRATION** | 2021-10-27 → 2021-11-15 (+19d) | 2021-11-03 → 2021-11-24 (+21d) | 6d → 8d |  |  | baseline start 2021-11-15 → 2021-11-09; baseline finish 2021-11-24 → 2021-11-16 |
| 41 | CONFIGURING NETWORKS | 2021-10-27 → 2021-11-15 (+19d) | 2021-10-28 → 2021-11-16 (+19d) |  |  |  | baseline start 2021-11-15 → 2021-11-09; baseline finish 2021-11-16 → 2021-11-10 |
| 42 | INSTALLING SOFTWARES IN WORKSTATIONS | 2021-10-29 → 2021-11-17 (+19d) | 2021-10-29 → 2021-11-17 (+19d) |  |  |  | baseline start 2021-11-17 → 2021-11-11; baseline finish 2021-11-17 → 2021-11-11 |
| 43 | SERVER MIGRATION | 2021-11-01 → 2021-11-18 (+17d) | 2021-11-01 → 2021-11-18 (+17d) |  |  |  | baseline start 2021-11-18 → 2021-11-12; baseline finish 2021-11-18 → 2021-11-12 |
| 44 | SECURITY CHECKS FOR N/W,WORKSTATIONS AND SERVERS | 2021-11-02 → 2021-11-19 (+17d) | 2021-11-03 → 2021-11-22 (+19d) |  |  |  | baseline start 2021-11-19 → none; baseline finish 2021-11-22 → none |
| 45 | BACKUP STORAGE MIGRATION TO CLOUD | 2021-11-02 → 2021-11-23 (+21d) | 2021-11-03 → 2021-11-24 (+21d) |  |  | 43, 44SS → 43, 44 | resources IT TECHNICAL CO-OD; PROJECT MANAGER → TECH 1; TECH 3; IT TECHNICAL CO-OD; PROJECT MANAGER; baseline start 2021-11-23 → 2021-11-15; baseline finish 2021-11-24 → 2021-11-16 |
| 46 | **TESTING** | 2021-11-08 → 2021-11-29 (+21d) | 2021-11-22 → 2021-12-14 (+22d) | 11d → 12d |  |  | baseline start 2021-11-29 → 2021-11-17; baseline finish 2021-12-14 → 2021-12-02 |
| 47 | DEVELOP A TEST PLAN | 2021-11-08 → 2021-11-29 (+21d) | 2021-11-08 → 2021-11-29 (+21d) |  |  |  | baseline start 2021-11-29 → 2021-11-17; baseline finish 2021-11-29 → 2021-11-17 |
| 48 | DEFINE TEST CASES | 2021-11-09 → 2021-11-30 (+21d) | 2021-11-09 → 2021-11-30 (+21d) |  |  |  | resources TECH 1; PUBLIC SAFETY IT SPECIALIST → PROJECT MANAGER; TECH 1; IT TECHNICAL CO-OD; baseline start 2021-11-30 → 2021-11-18; baseline finish 2021-11-30 → 2021-11-18 |
| 49 | **HARDWARE AND SOFTWARE TESTING** | 2021-11-10 → 2021-12-01 (+21d) | 2021-11-16 → 2021-12-08 (+22d) | 5d → 6d |  |  | baseline start 2021-12-01 → 2021-11-19; baseline finish 2021-12-08 → 2021-11-30 |
| 50 | TESTING THE NETWORKS CONNECTIVITY | 2021-11-10 → 2021-12-01 (+21d) | 2021-11-10 → 2021-12-01 (+21d) |  |  |  | resources IT TECHNICAL CO-OD; PROJECT MANAGER; TECH 2 → IT TECHNICAL CO-OD; TECH 1; PROJECT MANAGER; baseline start 2021-12-01 → 2021-11-19; baseline finish 2021-12-01 → 2021-11-19 |
| 51 | TESTING NEW WORKSTATIONS | 2021-11-11 → 2021-12-02 (+21d) | 2021-11-11 → 2021-12-02 (+21d) |  |  |  | baseline start 2021-12-02 → 2021-11-22; baseline finish 2021-12-02 → 2021-11-22 |
| 52 | TESTING SERVERS | 2021-11-12 → 2021-12-03 (+21d) | 2021-11-12 → 2021-12-06 (+24d) | 1d → 2d |  |  | baseline start 2021-12-03 → 2021-11-23; baseline finish 2021-12-06 → 2021-11-24 |
| 53 | PERFORM TESTING FOR BACKUP DATA ON CLOUD | 2021-11-15 → 2021-12-07 (+22d) | 2021-11-16 → 2021-12-08 (+22d) |  |  |  | baseline start 2021-12-07 → 2021-11-29; baseline finish 2021-12-08 → 2021-11-30 |
| 54 | **SYSTEM TESTING** | 2021-11-17 → 2021-12-09 (+22d) | 2021-11-17 → 2021-12-09 (+22d) |  |  |  | baseline start 2021-12-09 → 2021-12-01; baseline finish 2021-12-09 → 2021-12-02 |
| 55 | ANALYZING THE TEST RESULTS | 2021-11-17 → 2021-12-09 (+22d) | 2021-11-17 → 2021-12-09 (+22d) |  |  |  | baseline start 2021-12-09 → 2021-12-01; baseline finish 2021-12-09 → 2021-12-01 |
| 56 | SECURITY TESTING | 2021-11-18 → 2021-12-10 (+22d) | 2021-11-19 → 2021-12-13 (+24d) |  |  |  | baseline start 2021-12-10 → none; baseline finish 2021-12-13 → none |
| 57 | CLIENT APPROVAL | 2021-11-22 → 2021-12-14 (+22d) | 2021-11-22 → 2021-12-14 (+22d) |  |  |  | baseline start 2021-12-14 → 2021-12-02; baseline finish 2021-12-14 → 2021-12-02 |
| 58 | **IMPLEMENTATION** | 2021-11-23 → 2021-12-15 (+22d) | 2021-11-30 → 2021-12-21 (+21d) | 4d → 5d |  |  | baseline start 2021-12-15 → 2021-12-03; baseline finish 2021-12-21 → 2021-12-09 |
| 59 | PLANNING A TRAINING PROGRAM | 2021-11-23 → 2021-12-15 (+22d) | 2021-11-23 → 2021-12-15 (+22d) |  |  |  | resources PROJECT MANAGER; PUBLIC SAFETY IT SPECIALIST; IT TECHNICAL CO-OD → PROJECT MANAGER; PUBLIC SAFETY IT SPECIALIST; baseline start 2021-12-15 → 2021-12-03; baseline finish 2021-12-15 → 2021-12-03 |
| 60 | CONDUCTING THE TRAININGS | 2021-11-24 → 2021-12-16 (+22d) | 2021-11-29 → 2021-12-17 (+18d) |  |  |  | baseline start 2021-12-16 → 2021-12-06; baseline finish 2021-12-17 → 2021-12-07 |
| 61 | DOCUMENTATION | 2021-11-29 → 2021-12-20 (+21d) | 2021-11-29 → 2021-12-20 (+21d) |  |  |  | baseline start 2021-12-20 → 2021-12-08; baseline finish 2021-12-20 → 2021-12-08 |
| 62 | DELIVERABLE : PROJECT EXECUTION | 2021-11-30 → 2021-12-21 (+21d) | 2021-11-30 → 2021-12-21 (+21d) |  |  |  | baseline start 2021-12-21 → 2021-12-09; baseline finish 2021-12-21 → 2021-12-09 |
| 63 | MILESTONE - APPROVAL OF PROJECT EXECUTION | 2021-12-01 → 2021-12-22 (+21d) | 2021-12-01 → 2021-12-22 (+21d) |  |  |  | baseline start 2021-12-22 → 2021-12-10; baseline finish 2021-12-22 → 2021-12-10 |
| 64 | **PROJECT CLOSURE** | 2021-12-02 → 2021-12-27 (+25d) | 2021-12-06 → 2021-12-29 (+23d) |  |  |  | baseline start 2021-12-27 → 2021-12-13; baseline finish 2021-12-29 → 2021-12-15 |
| 65 | PREPARE PROJECT REPORT AND PRESENTATION | 2021-12-02 → 2021-12-23 (+21d) | 2021-12-03 → 2021-12-24 (+21d) |  |  |  | baseline start 2021-12-23 → 2021-12-13; baseline finish 2021-12-24 → 2021-12-14 |
| 66 | PREPARE ANNUAL REPORT | 2021-12-06 → 2021-12-27 (+21d) | 2021-12-06 → 2021-12-27 (+21d) |  |  |  | baseline start 2021-12-27 → 2021-12-15; baseline finish 2021-12-27 → 2021-12-15 |
| 67 | MILESTONE - APPROVAL OF PROJECT REPORT | 2021-12-07 → 2021-12-30 (+23d) | 2021-12-07 → 2021-12-30 (+23d) |  |  |  | baseline start 2021-12-30 → 2021-12-16; baseline finish 2021-12-30 → 2021-12-16 |

## Version 5 (data date 2021-10-01, saved 2021-12-07, file Group3_Revised Plan_ver2.mpp)

Note of the change: ITProject-Management-Repo

Last finish 2021-12-30 → 2021-12-07 (-23d).

Changed:

| ID | Task | Start | Finish | Duration | Total float | Predecessors | Other |
| --- | --- | --- | --- | --- | --- | --- | --- |
| 1 | **PROJECT INITIALIZATION** |  | 2021-09-20 → 2021-09-09 (-11d) | 13d → 6d |  |  |  |
| 2 | Identify MOV |  | 2021-09-06 → 2021-09-03 (-3d) | 3d → 2d |  |  |  |
| 3 | DEFINING ALTERNATIVES | 2021-09-07 → 2021-09-06 (-1d) | 2021-09-10 → 2021-09-07 (-3d) | 4d → 2d |  |  |  |
| 4 | TOTAL COST OF OWNERSHIP | 2021-09-13 → 2021-09-08 (-5d) | 2021-09-15 → 2021-09-08 (-7d) | 3d → 1d |  |  |  |
| 5 | TOTAL BENEFIT OF OWNERSHIP | 2021-09-16 → 2021-09-08 (-8d) | 2021-09-17 → 2021-09-08 (-9d) | 2d → 1d |  | 4 → 4SS | resources PROJECT MANAGER; TECH 2 → TECH 3 |
| 6 | BUSINESS CASE DELIVERABLE | 2021-09-20 → 2021-09-09 (-11d) | 2021-09-20 → 2021-09-09 (-11d) |  | none → 0d |  |  |
| 7 | MILESTONE : CLIENT APPROVAL OF BUSINESS CASE | 2021-09-21 → 2021-09-10 (-11d) | 2021-09-21 → 2021-09-10 (-11d) |  |  |  |  |
| 8 | **PROJECT CHARTER** | 2021-09-22 → 2021-09-13 (-9d) | 2021-09-23 → 2021-09-14 (-9d) |  |  |  |  |
| 9 | CREATING PROJECT CHARTER | 2021-09-22 → 2021-09-13 (-9d) | 2021-09-23 → 2021-09-14 (-9d) |  |  |  |  |
| 10 | MILESTONE:PROJECT CHARTER APPROVAL | 2021-09-24 → 2021-09-15 (-9d) | 2021-09-24 → 2021-09-15 (-9d) |  |  |  |  |
| 11 | **PROJECT PLANNING** | 2021-09-27 → 2021-09-16 (-11d) | 2021-10-08 → 2021-09-28 (-10d) | 10d → 9d |  |  |  |
| 12 | IDENTIFY SCOPE OF PROJECT | 2021-09-27 → 2021-09-16 (-11d) | 2021-09-28 → 2021-09-17 (-11d) |  |  |  | resources PROJECT MANAGER; TECH 2; PROJECT SPONSOR → PROJECT MANAGER; PROJECT SPONSOR |
| 13 | DESIGNING THE STRUCTURE CHART | 2021-09-29 → 2021-09-17 (-12d) | 2021-09-29 → 2021-09-17 (-12d) |  |  | 12 → 12SS |  |
| 14 | CREATING THE WORK BREAKDOWN STRUCTURE | 2021-09-30 → 2021-09-20 (-10d) | 2021-10-01 → 2021-09-21 (-10d) |  |  |  |  |
| 15 | IDENTIFY AND ALLOCATE RESOURCES | 2021-10-04 → 2021-09-22 (-12d) | 2021-10-04 → 2021-09-22 (-12d) |  |  |  | resources PROJECT MANAGER → TECH 2 |
| 16 | SECURITY PLANNING | 2021-10-04 → 2021-09-22 (-12d) | 2021-10-05 → 2021-09-23 (-12d) |  |  |  |  |
| 17 | ESTIMATING THE BUDGET | 2021-10-06 → 2021-09-24 (-12d) | 2021-10-07 → 2021-09-27 (-10d) |  |  |  |  |
| 18 | DELIVARABLE : SCOPE MANGEMENT PLAN | 2021-10-08 → 2021-09-28 (-10d) | 2021-10-08 → 2021-09-28 (-10d) |  |  |  |  |
| 19 | MILESTONE: SCOPE MANAGEMENT PLAN APPROVAL | 2021-10-11 → 2021-09-29 (-12d) | 2021-10-11 → 2021-09-29 (-12d) |  |  |  |  |
| 20 | **EXECUTE** | 2021-10-12 → 2021-09-30 (-12d) | 2021-12-21 → 2021-12-03 (-18d) | 49d → 45d |  |  |  |
| 21 | **ANALYSIS** | 2021-10-12 → 2021-09-30 (-12d) | 2021-10-21 → 2021-10-07 (-14d) | 8d → 6d |  |  |  |
| 22 | ANALYZING THE CURRENT SYSTEM | 2021-10-12 → 2021-09-30 (-12d) | 2021-10-13 → 2021-10-01 (-12d) |  |  |  | resources PROJECT MANAGER; TECH 1; TECH 2; TECH 3 → PROJECT MANAGER; TECH 1 |
| 23 | CURRENT SYSTEM SECURITY ANALYSIS | 2021-10-12 → 2021-10-01 (-11d) | 2021-10-12 → 2021-10-01 (-11d) |  |  | 19 → 19SS |  |
| 24 | REQUIREMENT GATHERING | 2021-10-14 → 2021-10-04 (-10d) | 2021-10-15 → 2021-10-05 (-10d) |  |  | 22, 23 → 22 | constraint start no earlier than 2021-10-14 → start no earlier than 2021-10-04; resources TECH 1; TECH 3 → TECH 3 |
| 25 | ANALYZE THE REQUIREMENTS | 2021-10-18 → 2021-10-06 (-12d) | 2021-10-19 → 2021-10-06 (-13d) | 2d → 1d |  |  |  |
| 26 | SECURITY REQUIREMENTS ANALYSIS | 2021-10-20 → 2021-10-06 (-14d) | 2021-10-20 → 2021-10-06 (-14d) |  |  | 25 → 25SS |  |
| 27 | CLIENT APPROVAL | 2021-10-21 → 2021-10-07 (-14d) | 2021-10-21 → 2021-10-07 (-14d) |  |  | 25, 26 → 25 | constraint start no earlier than 2021-10-21 → start no earlier than 2021-10-07 |
| 28 | **DESIGN** | 2021-10-22 → 2021-10-08 (-14d) | 2021-10-28 → 2021-10-13 (-15d) | 5d → 4d |  |  |  |
| 29 | DEVELOPING ICT DIAGRAM | 2021-10-22 → 2021-10-08 (-14d) | 2021-10-25 → 2021-10-11 (-14d) |  |  |  |  |
| 30 | ARCHITECTURAL DESIGN | 2021-10-26 → 2021-10-12 (-14d) | 2021-10-26 → 2021-10-12 (-14d) |  |  |  |  |
| 31 | IT SECURITY DESIGN | 2021-10-27 → 2021-10-12 (-15d) | 2021-10-27 → 2021-10-12 (-15d) |  |  | 30 → 30SS |  |
| 32 | CLIENT APPROVAL | 2021-10-28 → 2021-10-13 (-15d) | 2021-10-28 → 2021-10-13 (-15d) |  |  |  |  |
| 33 | **CONSTRUCTION** | 2021-10-29 → 2021-10-14 (-15d) | 2021-11-12 → 2021-10-22 (-21d) | 11d → 7d |  |  |  |
| 34 | UPGRADING NETWORKS | 2021-10-29 → 2021-10-14 (-15d) | 2021-11-01 → 2021-10-15 (-17d) |  |  |  |  |
| 35 | REPLACING WORKSTATIONS | 2021-11-02 → 2021-10-14 (-19d) | 2021-11-03 → 2021-10-15 (-19d) |  |  | 34 → 34SS |  |
| 36 | REPLACING SERVERS | 2021-11-04 → 2021-10-18 (-17d) | 2021-11-05 → 2021-10-18 (-18d) | 2d → 1d |  |  |  |
| 37 | MIGRATING BACKUP STORAGE FROM ONPREMISE TO CLOUD | 2021-11-08 → 2021-10-19 (-20d) | 2021-11-10 → 2021-10-20 (-21d) | 3d → 2d |  |  |  |
| 38 | VERIFYING THE SECUIRTY REQUIREMENTS OF BACKUP STORAGE | 2021-11-11 → 2021-10-21 (-21d) | 2021-11-11 → 2021-10-21 (-21d) |  |  |  | was named VERIFYING THE SECURITY REQUIREMENTS OF BACKUP STORAGE |
| 39 | CLIENT APPROVAL | 2021-11-12 → 2021-10-22 (-21d) | 2021-11-12 → 2021-10-22 (-21d) |  |  | 37, 38 → 37 |  |
| 40 | **INTEGRATION** | 2021-11-15 → 2021-10-26 (-20d) | 2021-11-24 → 2021-11-04 (-20d) |  |  |  |  |
| 41 | CONFIGURING NETWORKS | 2021-11-15 → 2021-10-26 (-20d) | 2021-11-16 → 2021-10-27 (-20d) |  |  |  |  |
| 42 | INSTALLING SOFTWARES IN WORKSTATIONS | 2021-11-17 → 2021-10-28 (-20d) | 2021-11-17 → 2021-10-28 (-20d) |  |  |  |  |
| 43 | SERVER MIGRATION | 2021-11-18 → 2021-10-29 (-20d) | 2021-11-18 → 2021-10-29 (-20d) |  |  |  |  |
| 44 | SECURITY CHECKS FOR NETWORKS , WORKSTATIONS AND SERVERS | 2021-11-19 → 2021-11-01 (-18d) | 2021-11-22 → 2021-11-02 (-20d) |  |  |  | was named SECURITY CHECKS FOR N/W,WORKSTATIONS AND SERVERS |
| 45 | BACKUP STORAGE MIGRATION TO CLOUD | 2021-11-23 → 2021-11-01 (-22d) | 2021-11-24 → 2021-11-02 (-22d) |  |  | 43, 44 → 43, 44SS | resources TECH 1; TECH 3; IT TECHNICAL CO-OD; PROJECT MANAGER → IT TECHNICAL CO-OD; PROJECT MANAGER |
| 46 | **TESTING** | 2021-11-29 → 2021-11-04 (-25d) | 2021-12-14 → 2021-11-22 (-22d) | 12d → 13d |  |  |  |
| 47 | DEVELOP A TEST PLAN | 2021-11-29 → 2021-11-04 (-25d) | 2021-11-29 → 2021-11-04 (-25d) |  |  | 40 → none |  |
| 48 | DEFINE TEST CASES | 2021-11-30 → 2021-11-05 (-25d) | 2021-11-30 → 2021-11-05 (-25d) |  |  |  | resources PROJECT MANAGER; TECH 1; IT TECHNICAL CO-OD → TECH 1; PUBLIC SAFETY IT SPECIALIST |
| 49 | **HARDWARE AND SOFTWARE TESTING** | 2021-12-01 → 2021-11-08 (-23d) | 2021-12-08 → 2021-11-16 (-22d) | 6d → 7d |  |  |  |
| 50 | TESTING THE NETWORKS CONNECTIVITY | 2021-12-01 → 2021-11-08 (-23d) | 2021-12-01 → 2021-11-09 (-22d) | 1d → 2d |  |  | resources IT TECHNICAL CO-OD; TECH 1; PROJECT MANAGER → IT TECHNICAL CO-OD; PROJECT MANAGER; TECH 2 |
| 51 | TESTING NEW WORKSTATIONS | 2021-12-02 → 2021-11-10 (-22d) | 2021-12-02 → 2021-11-11 (-21d) | 1d → 2d |  |  |  |
| 52 | TESTING SERVERS | 2021-12-03 → 2021-11-12 (-21d) | 2021-12-06 → 2021-11-12 (-24d) | 2d → 1d |  |  |  |
| 53 | PERFORM TESTING FOR BACKUP DATA ON CLOUD | 2021-12-07 → 2021-11-15 (-22d) | 2021-12-08 → 2021-11-16 (-22d) |  |  |  |  |
| 54 | **SYSTEM TESTING** | 2021-12-09 → 2021-11-17 (-22d) | 2021-12-09 → 2021-11-19 (-20d) | 1d → 3d |  |  |  |
| 55 | ANALYZING THE TEST RESULTS | 2021-12-09 → 2021-11-17 (-22d) | 2021-12-09 → 2021-11-17 (-22d) |  |  |  |  |
| 56 | SECURITY TESTING | 2021-12-10 → 2021-11-18 (-22d) | 2021-12-13 → 2021-11-19 (-24d) |  |  | 49, 54 → 49 |  |
| 57 | CLIENT APPROVAL | 2021-12-14 → 2021-11-22 (-22d) | 2021-12-14 → 2021-11-22 (-22d) |  |  | 55, 56 → 55 |  |
| 58 | **IMPLEMENTATION** | 2021-12-15 → 2021-11-23 (-22d) | 2021-12-21 → 2021-11-30 (-21d) | 5d → 4d |  |  |  |
| 59 | PLANNING A TRAINING PROGRAM | 2021-12-15 → 2021-11-23 (-22d) | 2021-12-15 → 2021-11-23 (-22d) |  |  |  | resources PROJECT MANAGER; PUBLIC SAFETY IT SPECIALIST → PROJECT MANAGER; PUBLIC SAFETY IT SPECIALIST; IT TECHNICAL CO-OD |
| 60 | CONDUCTING THE TRAININGS | 2021-12-16 → 2021-11-24 (-22d) | 2021-12-17 → 2021-11-29 (-18d) |  |  |  | resources TECH 1; TECH 2; Training [0.1%]; OfficeSupplies; Maintenance and Support [0.1%] → TECH 1; TECH 2; Training [0.1%]; OfficeSupplies |
| 61 | DOCUMENTATION | 2021-12-20 → 2021-11-24 (-26d) | 2021-12-20 → 2021-11-24 (-26d) |  |  | 57 → 60SS |  |
| 62 | DELIVERABLE : PROJECT EXECUTION | 2021-12-21 → 2021-11-30 (-21d) | 2021-12-21 → 2021-11-30 (-21d) |  |  |  |  |
| 63 | MILESTONE - APPROVAL OF PROJECT EXECUTION | 2021-12-22 → 2021-12-01 (-21d) | 2021-12-22 → 2021-12-01 (-21d) |  |  | 58, 62 → 58, 57 |  |
| 64 | **PROJECT CLOSURE** | 2021-12-27 → 2021-12-02 (-25d) | 2021-12-29 → 2021-12-06 (-23d) |  |  |  |  |
| 65 | PREPARE PROJECT REPORT AND PRESENTATION | 2021-12-23 → 2021-12-02 (-21d) | 2021-12-24 → 2021-12-03 (-21d) |  |  | 63, 58 → 63 |  |
| 66 | PREPARE ANNUAL REPORT | 2021-12-27 → 2021-12-06 (-21d) | 2021-12-27 → 2021-12-06 (-21d) |  |  | 63, 65 → 63 |  |
| 67 | MILESTONE - APPROVAL OF PROJECT REPORT | 2021-12-30 → 2021-12-07 (-23d) | 2021-12-30 → 2021-12-07 (-23d) |  |  |  |  |
